# Plan de proyecto

How a schedule from MS Project changed from version to version. A marks actual dates.

## Version 1 (saved 2018-10-25)

Note of the change: Plan de proyecto 1.0

| ID | WBS | Task | Duration | Start | Finish | Predecessors | Total float | Constraint |
| --- | --- | --- | --- | --- | --- | --- | --- | --- |
| 1 | 1 | **Aplicación para la Movilidad en el Transporte Público Urbano** | 23d | 2018-10-22 | 2018-11-21 |  | 0d |  |
| 2 | 1.1 | **Definición de artefactos** | 9d | 2018-10-22 | 2018-11-01 |  | 14d |  |
| 3 |  | Solicitud de desarrollo de software | 1d | 2018-10-22 | 2018-10-22 |  | 14d | start no earlier than 2018-10-22 |
| 4 |  | Análisis de factibilidad | 2d | 2018-10-23 | 2018-10-24 | 3 | 14d |  |
| 5 |  | Plan de gestión de riesgos | 2d | 2018-10-25 | 2018-10-26 | 4 | 14d |  |
| 6 |  | Plan de calidad | 3d | 2018-10-29 | 2018-10-31 | 5 | 14d | finish no earlier than 2018-10-31 |
| 7 |  | Plan de medición | 3d | 2018-10-29 | 2018-10-31 | 5 | 14d | finish no earlier than 2018-10-31 |
| 8 |  | Plan de administración y control de cambio | 1d | 2018-11-01 | 2018-11-01 | 7, 6 | 14d | start no earlier than 2018-10-31 |
| 9 | 1.2 | **Requerimientos** | 7d | 2018-11-01 | 2018-11-09 |  | 8d |  |
| 10 |  | Resultado de análisis documental | 2d | 2018-11-01 | 2018-11-02 |  | 8d | start no earlier than 2018-11-01 |
| 11 |  | Prototipo no funcional | 2d | 2018-11-01 | 2018-11-02 |  | 8d | start no earlier than 2018-11-01 |
| 12 |  | Diagrama de casos de uso | 1d | 2018-11-05 | 2018-11-05 | 10, 11 | 12d |  |
| 13 |  | Descripción de casos de uso | 3d | 2018-11-05 | 2018-11-07 | 10, 11 | 8d |  |
| 14 |  | Checklist para evaluación de requerimientos | 1d | 2018-11-07 | 2018-11-07 |  | 8d | start no earlier than 2018-11-07 |
| 15 |  | Especificación de requerimientos | 2d | 2018-11-08 | 2018-11-09 | 13 | 8d |  |
| 16 |  | Evaluación de requerimientos | 2d | 2018-11-08 | 2018-11-09 | 13, 14 | 8d | start no earlier than 2018-11-08 |
| 17 |  | Estimación de esfuerzo TCPU | 2d | 2018-11-08 | 2018-11-09 | 13 | 8d | start no earlier than 2018-11-08 |
| 18 | 1.3 | **Análisis/Diseño** | 6d | 2018-11-12 | 2018-11-19 |  | 2d |  |
| 19 |  | Modelo de dominio | 2d | 2018-11-12 | 2018-11-13 |  | 3d | start no earlier than 2018-11-12 |
| 20 |  | Diagrama de robustez | 1d | 2018-11-14 | 2018-11-14 | 19 | 3d |  |
| 21 |  | Modelo de dominio actualizado | 1d | 2018-11-14 | 2018-11-14 | 19 | 3d | start no earlier than 2018-11-14 |
| 22 |  | Diagrama de secuencia | 2d | 2018-11-15 | 2018-11-16 | 20 | 3d |  |
| 23 |  | Diagrama de clases | 2d | 2018-11-15 | 2018-11-16 | 21 | 3d |  |
| 24 |  | Checklist para evaluación de diseño | 1d | 2018-11-16 | 2018-11-16 |  | 2d | start no earlier than 2018-11-16 |
| 25 |  | Evaluación de diseño | 1d | 2018-11-19 | 2018-11-19 | 24 | 2d |  |
| 26 | 1.4 | **Cierre** | 2d | 2018-11-20 | 2018-11-21 |  | 0d |  |
| 27 |  | Portafolio de proyecto | 1d | 2018-11-20 | 2018-11-20 |  | 0d | start no earlier than 2018-11-20 |
| 28 |  | Presentación de proyecto | 1d | 2018-11-21 | 2018-11-21 | 27 | 0d |  |

## Version 2 (data date 2018-10-25, saved 2018-10-28)

Note of the change: EDT del proyecto

Last finish stays 2018-11-21. Complete tasks 0 → 2.

Added:

| ID | Task | Duration | Start | Finish | Predecessors | Resources |
| --- | --- | --- | --- | --- | --- | --- |
| 17 | Reporte de aplicación del checklist de requerimientos | 1d | 2018-11-09 | 2018-11-09 | 16 | Alberto Hernández Gómez |
| 25 | **Evaluación de diseño** | 2d | 2018-11-16 | 2018-11-19 |  |  |

Changed:

| ID | Task | Start | Finish | Duration | Complete | Total float | Other |
| --- | --- | --- | --- | --- | --- | --- | --- |
| 1 | **Aplicación para la Movilidad en el Transporte Público Urbano** | 2018-10-22 A |  |  | 0% → 9% |  | baseline start none → 2018-10-22; baseline finish none → 2018-11-21 |
| 2 | **Definición de artefactos** | 2018-10-22 A |  |  | 0% → 29% |  | baseline start none → 2018-10-22; baseline finish none → 2018-11-01 |
| 3 | Solicitud de desarrollo de software | 2018-10-22 A | 2018-10-22 A |  | 0% → 100% | 14d → none | baseline start none → 2018-10-22; baseline finish none → 2018-10-22 |
| 4 | Análisis de factibilidad | 2018-10-23 A | 2018-10-24 A |  | 0% → 100% | 14d → none | baseline start none → 2018-10-23; baseline finish none → 2018-10-24 |
| 5 | Plan de gestión de riesgos | 2018-10-25 A |  |  | 0% → 25% |  | baseline start none → 2018-10-25; baseline finish none → 2018-10-26 |
| 6 | Plan de calidad |  |  |  |  |  | baseline start none → 2018-10-29; baseline finish none → 2018-10-31 |
| 7 | Plan de medición |  |  |  |  |  | baseline start none → 2018-10-29; baseline finish none → 2018-10-31 |
| 8 | Plan de administración y control de cambio |  |  |  |  |  | baseline start none → 2018-11-01; baseline finish none → 2018-11-01 |
| 9 | **Requerimientos** |  | 2018-11-09 → 2018-11-12 (+3d) | 7d → 8d |  | 8d → 7d | baseline start none → 2018-11-01; baseline finish none → 2018-11-12 |
| 10 | Resultado de análisis documental |  |  |  |  |  | baseline start none → 2018-11-01; baseline finish none → 2018-11-02 |
| 11 | Prototipo no funcional |  |  |  |  |  | baseline start none → 2018-11-01; baseline finish none → 2018-11-02 |
| 12 | Diagrama de casos de uso |  |  |  |  |  | baseline start none → 2018-11-05; baseline finish none → 2018-11-05 |
| 13 | Descripción de casos de uso |  |  |  |  |  | baseline start none → 2018-11-05; baseline finish none → 2018-11-07 |
| 14 | Especificación de requerimientos |  |  |  |  |  | baseline start none → 2018-11-08; baseline finish none → 2018-11-09 |
| 15 | **Evaluación de requerimientos** |  |  |  |  |  | constraint start no earlier than 2018-11-08 → none; baseline start none → 2018-11-08; baseline finish none → 2018-11-09 |
| 16 | Checklist de requerimientos | 2018-11-07 → 2018-11-08 (+1d) | 2018-11-07 → 2018-11-08 (+1d) |  |  |  | was named Checklist para evaluación de requerimientos; baseline start none → 2018-11-08; baseline finish none → 2018-11-08 |
| 18 | Estimación de esfuerzo TCPU | 2018-11-08 → 2018-11-09 (+1d) | 2018-11-09 → 2018-11-12 (+3d) |  |  | 8d → 7d | constraint start no earlier than 2018-11-08 → start no earlier than 2018-11-09; baseline start none → 2018-11-09; baseline finish none → 2018-11-12 |
| 19 | **Análisis/Diseño** |  |  |  |  |  | baseline start none → 2018-11-12; baseline finish none → 2018-11-19 |
| 20 | Modelo de dominio |  |  |  |  |  | baseline start none → 2018-11-12; baseline finish none → 2018-11-13 |
| 21 | Diagrama de robustez |  |  |  |  |  | baseline start none → 2018-11-14; baseline finish none → 2018-11-14 |
| 22 | Modelo de dominio actualizado |  |  |  |  |  | baseline start none → 2018-11-14; baseline finish none → 2018-11-14 |
| 23 | Diagrama de secuencia |  |  |  |  |  | baseline start none → 2018-11-15; baseline finish none → 2018-11-16 |
| 24 | Diagrama de clases |  |  |  |  |  | baseline start none → 2018-11-15; baseline finish none → 2018-11-16 |
| 26 | Checklist de diseño |  |  |  |  |  | was named Checklist para evaluación de diseño; baseline start none → 2018-11-16; baseline finish none → 2018-11-16 |
| 27 | Reporte de aplicación del checklist de diseño |  |  |  |  |  | was named Evaluación de diseño; baseline start none → 2018-11-19; baseline finish none → 2018-11-19 |
| 28 | **Cierre** |  |  |  |  |  | baseline start none → 2018-11-20; baseline finish none → 2018-11-21 |
| 29 | Portafolio de proyecto |  |  |  |  |  | baseline start none → 2018-11-20; baseline finish none → 2018-11-20 |
| 30 | Presentación de proyecto |  |  |  |  |  | baseline start none → 2018-11-21; baseline finish none → 2018-11-21 |

## Version 3 (data date 2018-10-25, saved 2018-10-29)

Note of the change: Actualización de fechas

Last finish stays 2018-11-21.

Changed:

| ID | Task | Start | Finish | Duration | Complete | Total float | Predecessors | Other |
| --- | --- | --- | --- | --- | --- | --- | --- | --- |
| 1 | **Aplicación para la Movilidad en el Transporte Público Urbano** |  |  | 23d → 24d | 9% → 17% |  |  |  |
| 2 | **Definición de artefactos** |  | 2018-11-01 → 2018-11-02 (+1d) | 9d → 10d | 29% → 55% |  |  |  |
| 5 | Plan de gestión de riesgos |  | 2018-10-26 → 2018-10-29 (+3d) | 2d → 3d | 25% → 67% | 14d → 1d |  |  |
| 6 | Plan de medición | 2018-10-29 → 2018-10-30 A (+1d) |  | 3d → 2d | 0% → 50% | 14d → 16d |  |  |
| 7 | Plan de calidad | 2018-10-29 → 2018-11-01 (+3d) | 2018-10-31 → 2018-11-02 (+2d) | 3d → 2d |  |  | 5 → none | constraint finish no earlier than 2018-10-31 → start no earlier than 2018-11-01 |
| 8 | Plan de administración y control de cambio | 2018-11-01 → 2018-11-02 (+1d) | 2018-11-01 → 2018-11-02 (+1d) |  |  |  | 6, 7 → none | constraint start no earlier than 2018-10-31 → finish no earlier than 2018-11-02 |
| 9 | **Requerimientos** | 2018-11-01 → 2018-11-03 (+2d) |  | 8d → 7d |  |  |  |  |
| 10 | Resultado de análisis documental | 2018-11-01 → 2018-11-03 (+2d) | 2018-11-02 → 2018-11-04 (+2d) | 2d → 1d |  |  |  | constraint start no earlier than 2018-11-01 → finish no earlier than 2018-11-04 |
| 11 | Prototipo no funcional | 2018-11-01 → 2018-11-03 (+2d) | 2018-11-02 → 2018-11-04 (+2d) | 2d → 1d |  |  |  | constraint start no earlier than 2018-11-01 → finish no earlier than 2018-11-04 |

## Version 4 (data date 2018-10-25, saved 2018-11-15)

Note of the change: Actualización del plan

Last finish stays 2018-11-21. Complete tasks 2 → 17.

Added:

| ID | Task | Duration | Start | Finish | Constraint | Resources |
| --- | --- | --- | --- | --- | --- | --- |
| 27 | Reporte de revisión de artefactos de planeación | 1d | 2018-11-19 | 2018-11-19 | start no earlier than 2018-11-19 | Kevín Yaír Hernández Macías |
| 28 | Reporte de revisión de artefactos de requerimientos | 1d | 2018-11-20 | 2018-11-20 | start no earlier than 2018-11-20 | Juan Carlos Domínguez Domínguez |

Removed: 23 Diagrama de secuencia; 24 Diagrama de clases

Changed:

| ID | Task | Start | Finish | Duration | Complete | Total float | Predecessors | Other |
| --- | --- | --- | --- | --- | --- | --- | --- | --- |
| 1 | **Aplicación para la Movilidad en el Transporte Público Urbano** |  |  | 24d → 25d | 17% → 83% |  |  |  |
| 2 | **Definición de artefactos** |  | 2018-11-02 A |  | 55% → 100% | 14d → none |  |  |
| 5 | Plan de gestión de riesgos |  | 2018-10-29 A |  | 67% → 100% | 1d → none |  |  |
| 6 | Plan de medición |  | 2018-10-31 A |  | 50% → 100% | 16d → none |  |  |
| 7 | Plan de calidad | 2018-11-01 A | 2018-11-02 A |  | 0% → 100% | 14d → none |  |  |
| 8 | Plan de administración y control de cambio | 2018-11-02 A | 2018-11-02 A |  | 0% → 100% | 14d → none |  |  |
| 9 | **Requerimientos** | 2018-11-03 A | 2018-11-12 → 2018-11-08 A (-4d) | 7d → 6d | 0% → 100% | 7d → none |  |  |
| 10 | Resultado de análisis documental | 2018-11-03 A | 2018-11-04 A | 1d → 2d | 0% → 100% | 8d → none |  | constraint finish no earlier than 2018-11-04 → start no earlier than 2018-11-03; resources Alberto Hernández Gómez; Carlos Alberto Onorio Torres; Juan Carlos Domínguez Domínguez; Kevín Yaír Hernández Macías → Alberto Hernández Gómez; Juan Carlos Domínguez Domínguez; Kevín Yaír Hernández Macías |
| 11 | Prototipo no funcional | 2018-11-03 A | 2018-11-04 A | 1d → 2d | 0% → 100% | 8d → none |  | constraint finish no earlier than 2018-11-04 → start no earlier than 2018-11-03; resources Alberto Hernández Gómez; Carlos Alberto Onorio Torres; Juan Carlos Domínguez Domínguez; Kevín Yaír Hernández Macías → Alberto Hernández Gómez; Juan Carlos Domínguez Domínguez; Kevín Yaír Hernández Macías; Carlos Alberto Onorio Torres |
| 12 | Diagrama de casos de uso | 2018-11-05 A | 2018-11-05 A |  | 0% → 100% | 12d → none |  | resources Alberto Hernández Gómez → Carlos Alberto Onorio Torres |
| 13 | Descripción de casos de uso | 2018-11-05 A | 2018-11-07 A |  | 0% → 100% | 8d → none |  |  |
| 14 | Especificación de requerimientos | 2018-11-08 → 2018-11-07 A (-1d) | 2018-11-09 → 2018-11-08 A (-1d) |  | 0% → 100% | 8d → none | 13 → none | constraint none → start no earlier than 2018-11-07; resources Alberto Hernández Gómez → Juan Carlos Domínguez Domínguez |
| 15 | **Evaluación de requerimientos** | 2018-11-08 → 2018-11-07 A (-1d) | 2018-11-09 → 2018-11-08 A (-1d) | 2d → 1.5d | 0% → 100% | 8d → none |  |  |
| 16 | Checklist de requerimientos | 2018-11-08 → 2018-11-07 A (-1d) | 2018-11-08 → 2018-11-07 A (-1d) |  | 0% → 100% | 8d → none |  |  |
| 17 | Reporte de aplicación del checklist de requerimientos | 2018-11-09 → 2018-11-07 A (-2d) | 2018-11-09 → 2018-11-08 A (-1d) |  | 0% → 100% | 8d → none |  | resources Alberto Hernández Gómez → Alberto Hernández Gómez; Carlos Alberto Onorio Torres; Juan Carlos Domínguez Domínguez; Kevín Yaír Hernández Macías |
| 18 | Estimación de esfuerzo TCPU | 2018-11-09 → 2018-11-07 A (-2d) | 2018-11-12 → 2018-11-08 A (-4d) |  | 0% → 100% | 7d → none | 13 → none | constraint start no earlier than 2018-11-09 → start no earlier than 2018-11-07 |
| 19 | **Análisis/Diseño** | 2018-11-12 A | 2018-11-19 → 2018-11-16 (-3d) | 6d → 5d | 0% → 67% | 2d → 3d |  |  |
| 20 | Modelo de dominio | 2018-11-12 A | 2018-11-13 A |  | 0% → 100% | 3d → none |  |  |
| 21 | Diagrama de robustez | 2018-11-14 A | 2018-11-14 A |  | 0% → 100% | 3d → none |  | resources Alberto Hernández Gómez → Juan Carlos Domínguez Domínguez |
| 22 | Modelo de dominio actualizado | 2018-11-14 A | 2018-11-14 A |  | 0% → 100% | 3d → none |  | resources Kevín Yaír Hernández Macías → Juan Carlos Domínguez Domínguez |
| 23 | **Evaluación de diseño** | 2018-11-16 → 2018-11-15 (-1d) | 2018-11-19 → 2018-11-16 (-3d) |  |  | 2d → 3d |  |  |
| 24 | Checklist de diseño | 2018-11-16 → 2018-11-15 (-1d) | 2018-11-16 → 2018-11-15 (-1d) |  |  | 2d → 3d |  | constraint start no earlier than 2018-11-16 → start no earlier than 2018-11-15 |
| 25 | Reporte de aplicación del checklist de diseño | 2018-11-19 → 2018-11-16 (-3d) | 2018-11-19 → 2018-11-16 (-3d) |  |  | 2d → 3d |  |  |
| 26 | **Cierre** | 2018-11-20 → 2018-11-19 (-1d) |  | 2d → 3d |  |  |  |  |

## Version 5 (data date 2018-10-25, saved 2018-11-21)

Note of the change: Revision de artefactos de planeacion y actualizacion de artefactos

Last finish 2018-11-21 → 2018-11-20 (-1d). Complete tasks 17 → 23.

Changed:

| ID | Task | Start | Finish | Duration | Complete | Total float | Other |
| --- | --- | --- | --- | --- | --- | --- | --- |
| 1 | **Aplicación para la Movilidad en el Transporte Público Urbano** |  | 2018-11-21 → 2018-11-20 A (-1d) | 25d → 24d | 83% → 100% | 0d → none |  |
| 19 | **Análisis/Diseño** |  | 2018-11-16 A |  | 67% → 100% | 3d → none |  |
| 23 | **Evaluación de diseño** | 2018-11-15 A | 2018-11-16 A |  | 0% → 100% | 3d → none |  |
| 24 | Checklist de diseño | 2018-11-15 A | 2018-11-15 A |  | 0% → 100% | 3d → none |  |
| 25 | Reporte de aplicación del checklist de diseño | 2018-11-16 A | 2018-11-16 A |  | 0% → 100% | 3d → none |  |
| 26 | **Cierre** | 2018-11-19 A | 2018-11-21 → 2018-11-20 A (-1d) | 3d → 2d | 0% → 100% | 0d → none |  |
| 27 | Reporte de revisión de artefactos de planeación | 2018-11-19 A | 2018-11-19 A |  | 0% → 100% | 2d → none |  |
| 28 | Reporte de revisión de artefactos de requerimientos | 2018-11-20 A | 2018-11-20 A |  | 0% → 100% | 1d → none |  |
| 29 | Portafolio de proyecto | 2018-11-20 A | 2018-11-20 A |  | 0% → 100% | 0d → none |  |
| 30 | Presentación de proyecto | 2018-11-21 → 2018-11-20 A (-1d) | 2018-11-21 → 2018-11-20 A (-1d) |  | 0% → 100% | 0d → none | constraint none → start no earlier than 2018-11-20; resources Alberto Hernández Gómez; Carlos Alberto Onorio Torres; Juan Carlos Domínguez Domínguez; Kevín Yaír Hernández Macías → Alberto Hernández Gómez; Carlos Alberto Onorio Torres; Kevín Yaír Hernández Macías |
